# 4746 hub

Schedule from a web Gantt chart, 2024-08-09 to 2024-09-05.
Saturdays and Sundays are off

## Schedule

| ID | WBS | Task | Duration | Start | Finish | Predecessors | inPeople | Status |
| --- | --- | --- | --- | --- | --- | --- | --- | --- |
| 2 | 1 | 确认预扫问题 | 2d | 2024-08-09 | 2024-08-12 |  | 供应商 |  |
| 3 | 2 | 解决预扫问题，提交预扫通过结果 | 3d | 2024-08-13 | 2024-08-15 | 2 | 供应商 | waiting |
| 4 | 3 | ID确认配色方案 | 5d | 2024-08-12 | 2024-08-16 |  | ID | waiting |
| 5 | 4 | 开模 T0 样 | 15d | 2024-08-16 | 2024-09-05 | 3 | 供应商 | waiting |
| 6 | 5 | PCBA贴片 T0 | 15d | 2024-08-16 | 2024-09-05 | 3 |  | waiting |

Notes:
- 4: 确认工程师，压住需求
